# Banka krvi

Schedule from MS Project, 2014-03-17 to 2014-06-30, costs in kn.
Razvoj aplikacije Banka krvi
Krvnik

## Calendars

- Standard: Mon-Fri 08:00-12:00, 13:00-17:00; Sat-Sun off. Exceptions (off unless hours are given): 2014-04-04 to 2014-06-23 09:00-10:00 (Radno vrijeme, recurring), 2014-04-04 to 2014-06-23 13:00-16:00 (Vikend, recurring).

## Resources

| Resource | Rate | Cost per use |
| --- | --- | --- |
| Viktor | 45 |  |
| Roko | 40 |  |
| Darijan | 35 |  |
| Mislav | 35 |  |
| Filip | 35 |  |
| Laptop |  | 10 |
| Proračun |  |  |

## Schedule

| ID | WBS | Task | Type | Duration | Start | Finish | Predecessors | Total slack | Resources | Work | Cost |
| --- | --- | --- | --- | --- | --- | --- | --- | --- | --- | --- | --- |
| 1 | 1 | **Banka krvi** |  | 34.19d | 2014-03-17 | 2014-06-30 |  | 0d |  | 1161.5h | 44,565 |
| 2 | 1.1 | POČETAK PROJEKTA | milestone | 0d | 2014-03-17 | 2014-03-17 |  | 34.19d |  |  |  |
| 3 | 1.2 | **Planiranje projekta** |  | 1.75d | 2014-03-17 | 2014-03-18 |  | 0d |  | 70h | 2,680 |
| 4 | 1.2.1 | Sastanak tima |  | 5h | 2014-03-17 | 2014-03-17 |  | 0d | Viktor; Darijan; Filip; Laptop [500%]; Mislav; Roko | 25h | 960 |
| 5 | 1.2.2 | Definiranje ideje aplikacije |  | 1d | 2014-03-17 | 2014-03-18 | 4 | 0d | Darijan; Filip; Laptop; Mislav; Roko; Viktor | 40h | 1,530 |
| 6 | 1.2.3 | Podjela uloga |  | 1h | 2014-03-18 | 2014-03-18 | 5 | 0d | Viktor; Roko; Mislav; Filip; Darijan | 5h | 190 |
| 7 | 1.3 | **Izrada projektnog plana** |  | 3.81d | 2014-03-18 | 2014-03-24 | 3 | 0d |  | 86.5h | 3,225 |
| 8 | 1.3.1 | Planiranje radnih aktivnosti |  | 4h | 2014-03-18 | 2014-03-19 | 3 | 0d | Laptop [200%]; Mislav; Darijan | 8h | 290 |
| 9 | 1.3.2 | Planirano trajanje aktivnosti |  | 2h | 2014-03-19 | 2014-03-19 | 8 | 0d | Laptop [200%]; Mislav; Darijan | 4h | 150 |
| 10 | 1.3.3 | Procjena troškova aplikacije |  | 2h | 2014-03-19 | 2014-03-19 | 9 | 0d | Viktor; Darijan; Filip; Laptop; Mislav; Roko | 10h | 390 |
| 11 | 1.3.4 | Procjena vremena izrade aplikacije |  | 2.5h | 2014-03-19 | 2014-03-20 | 10 | 0d | Viktor; Darijan; Filip; Laptop; Mislav; Roko | 12.5h | 485 |
| 12 | 1.3.5 | Određivane proračuna |  | 1d | 2014-03-20 | 2014-03-21 | 11 | 0d | Laptop [200%]; Mislav; Darijan | 16h | 570 |
| 13 | 1.3.6 | Izrada ponude |  | 1d | 2014-03-21 | 2014-03-24 | 12 | 0d | Laptop [200%]; Mislav; Darijan | 16h | 570 |
| 14 | 1.3.7 | Izrada I dorada projektne dokumentacije |  | 4h | 2014-03-24 | 2014-03-24 | 13 | 0d | Viktor; Darijan; Filip; Laptop [500%]; Mislav; Roko | 20h | 770 |
| 15 | 1.4 | ZAVRŠENA IZRADA PROJEKTNOG PLANA | milestone | 0d | 2014-03-24 | 2014-03-24 | 14 | 0d |  |  |  |
| 16 | 1.5 | **Izrada projekta** |  | 24.25d | 2014-03-24 | 2014-06-22 | 15 | 0d |  | 830h | 31,980 |
| 17 | 1.5.1 | **MODELIRANJE PROJEKTA** |  | 9d | 2014-03-24 | 2014-04-06 | 15 | 0d |  | 240h | 9,390 |
| 18 | 1.5.1.1 | Sastanak tima I raspodjela zadataka |  | 2h | 2014-03-24 | 2014-03-24 | 14 | 0d | Viktor; Darijan; Filip; Laptop; Mislav; Roko | 10h | 390 |
| 19 | 1.5.1.2 | Izrada ERA modela |  | 2d | 2014-03-24 | 2014-03-26 | 18 | 0d | Viktor; Laptop [200%]; Roko | 32h | 1,370 |
| 20 | 1.5.1.3 | Izrada dijagrama slučajeva korištenja |  | 1d | 2014-03-26 | 2014-03-27 | 19 | 0d | Viktor; Darijan; Laptop [200%]; Roko | 24h | 970 |
| 21 | 1.5.1.4 | Izrada dijagrama aktivnosti |  | 8h | 2014-03-27 | 2014-03-28 | 20 | 0d | Viktor; Darijan; Filip; Laptop [500%]; Mislav; Roko | 40h | 1,530 |
| 22 | 1.5.1.5 | Izrada dijagrama slijeda |  | 1d | 2014-03-28 | 2014-03-31 | 21 | 0d | Viktor; Darijan; Filip; Laptop [500%]; Mislav; Roko | 40h | 1,530 |
| 23 | 1.5.1.6 | Izrada dijagrama klasa |  | 6h | 2014-03-31 | 2014-04-01 | 22 | 0d | Darijan; Laptop | 6h | 220 |
| 24 | 1.5.1.7 | Izrada skica I dizajna aplikacije |  | 2d | 2014-04-01 | 2014-04-03 | 23 | 0d | Viktor; Darijan; Filip; Laptop [200%] | 48h | 1,850 |
| 25 | 1.5.1.8 | Dorada projektne dokumentacije |  | 1d | 2014-04-03 | 2014-04-06 | 24 | 0d | Viktor; Darijan; Filip; Laptop [500%]; Mislav; Roko | 40h | 1,530 |
| 26 | 1.5.2 | MODELIRANJE PROJEKTA ZAVRŠENO | milestone | 0d | 2014-04-06 | 2014-04-06 | 25 | 0d |  |  |  |

| ID | WBS | Task | Type | Duration | Start | Finish | Predecessors | Total slack | Resources | Work | Cost |
| --- | --- | --- | --- | --- | --- | --- | --- | --- | --- | --- | --- |
| 27 | 1.5.3 | **IZRADA APLIKACIJE** |  | 15.25d | 2014-04-06 | 2014-06-22 |  | 0d |  | 590h | 22,590 |
| 28 | 1.5.3.1 | Sastanak tima I raspodjela zadataka |  | 3h | 2014-04-06 | 2014-04-07 | 26 | 0d | Viktor; Darijan; Filip; Laptop [500%]; Mislav; Roko | 15h | 580 |
| 29 | 1.5.3.2 | Izrada modula "PACIJENTI" |  | 2d | 2014-04-07 | 2014-04-19 | 28 | 0d | Viktor; Darijan; Filip; Laptop [500%]; Mislav; Roko | 80h | 3,050 |
| 30 | 1.5.3.3 | Izrada modula "DONACIJE" |  | 2d | 2014-04-19 | 2014-04-27 | 29 | 0d | Viktor; Darijan; Filip; Laptop [500%]; Mislav; Roko | 80h | 3,050 |
| 31 | 1.5.3.4 | Izrada modula "TRANSFUZIJE" |  | 2d | 2014-04-27 | 2014-05-09 | 30 | 0d | Viktor; Darijan; Filip; Laptop [500%]; Mislav; Roko | 80h | 3,050 |
| 32 | 1.5.3.5 | Izrada modula "UPRAVLJANJE ZALIHAMA KRVI - HLADNJACI" |  | 2d | 2014-05-09 | 2014-05-18 | 31 | 0d | Viktor; Darijan; Filip; Laptop [500%]; Mislav; Roko | 80h | 3,050 |
| 33 | 1.5.3.6 | Izrada modula "STATISTIKA I ANALIZA" |  | 2d | 2014-05-18 | 2014-05-29 | 32 | 0d | Viktor; Darijan; Filip; Laptop [500%]; Mislav; Roko | 80h | 3,050 |
| 34 | 1.5.3.7 | Izrada modula "ADMINISTRACIJA SUSTAVA" |  | 2d | 2014-05-29 | 2014-06-08 | 33 | 0d | Viktor; Darijan; Filip; Laptop [500%]; Mislav; Roko | 80h | 3,050 |
| 35 | 1.5.3.8 | Testiranje modula |  | 4h | 2014-06-08 | 2014-06-10 | 34 | 0d | Viktor; Filip; Laptop [300%]; Roko | 12h | 490 |
| 36 | 1.5.3.9 | Pregled I provjera funkcionalnosti aplikacije |  | 5h | 2014-06-10 | 2014-06-14 | 35 | 0d | Viktor; Darijan; Filip; Laptop [500%]; Mislav; Roko | 25h | 960 |
| 37 | 1.5.3.10 | Dorada aplikacije |  | 1d | 2014-06-14 | 2014-06-19 | 36 | 0d | Viktor; Darijan; Filip; Laptop [500%]; Mislav; Roko | 40h | 1,530 |
| 38 | 1.5.3.11 | Završno testiranje aplikacije |  | 6h | 2014-06-19 | 2014-06-22 | 37 | 0d | Viktor; Filip; Laptop [300%]; Roko | 18h | 730 |
| 39 | 1.5.4 | IZRADA APLIKACIJE ZAVRŠENA | milestone | 0d | 2014-06-22 | 2014-06-22 | 38 | 0d |  |  |  |
| 40 | 1.6 | Pisanje projektne dokumentacije |  | 4d | 2014-06-22 | 2014-06-27 | 39 | 0d | Viktor; Darijan; Filip; Laptop [300%]; Mislav; Roko | 160h | 6,090 |
| 41 | 1.7 | Prezentacija rješenja |  | 2h | 2014-06-27 | 2014-06-27 | 40 | 0d | Viktor; Darijan; Filip; Laptop; Mislav; Roko | 10h | 390 |
| 42 | 1.8 | Isporuka aplikacije |  | 1h | 2014-06-27 | 2014-06-30 | 41 | 0d | Viktor; Darijan; Filip; Laptop; Mislav; Roko | 5h | 200 |
| 43 | 2 | PROJEKT ZAVRŠEN | milestone | 0d | 2014-06-30 | 2014-06-30 | 42 | 0d |  |  |  |
